# Simple Project Plan

Schedule from MS Project, 2022-03-31 to 2022-12-01.

## Calendars

- Standard: Mon-Fri 08:00-12:00, 13:00-17:00; Sat-Sun off. Exceptions (off unless hours are given): 2022-04-24 08:00-12:00, 13:00-17:00 (五一补班1), 2022-04-30 to 2022-05-04 (五一假期), 2022-05-07 08:00-12:00, 13:00-17:00 (五一补班2), 2022-06-03 (端午节), 2022-09-12 (中秋节), 2022-10-01 to 2022-10-07 (国庆假期), 2022-10-08 to 2022-10-09 08:00-12:00, 13:00-17:00 (国庆补班).

## Resources

| Resource |
| --- |
| 产品经理 |
| 营销 |
| GTM |
| 项目经理 |
| ID |
| 结构PM |
| 硬件PM |
| 软件PM |
| 采购CEG |
| 财经 |
| SQA |
| MKT |
| 营销经理 |
| PQA |
| XX PM |
| 包装工程师 |
| 测试代表 |
| PQE |
| 认证PM |

## Schedule

| ID | WBS | Task | Type | Duration | Start | Finish | Predecessors | Total slack | Free slack | Resources | Work | 输入 | 输出 | 相关方角色 |
| --- | --- | --- | --- | --- | --- | --- | --- | --- | --- | --- | --- | --- | --- | --- |
| 1 | 1 | 产品路线图锁定 | milestone, manual | 1d | 2022-03-31 | 2022-03-31 |  |  |  |  |  |  |  |  |
| 2 | 2 | **提炼初步产品概念及SPT启动** |  | 6d | 2022-04-01 | 2022-04-08 | 1 | 0d |  |  | 136h | 产品路线图 | 初步产品概念、产品需求表1.0 | 产品经理、营销、GTM |
| 3 | 2.1 | 市场洞察(市场/用户/竞品/上一代) |  | 5d | 2022-04-01 | 2022-04-07 |  | 0d |  | 产品经理 | 40h |  |  |  |
| 4 | 2.2 | 技术洞察 |  | 5d | 2022-04-01 | 2022-04-07 |  | 0d |  | 产品经理 | 40h |  |  |  |
| 5 | 2.3 | 初步产品概念共创 |  | 5d | 2022-04-01 | 2022-04-07 |  | 0d |  | 产品经理 | 40h |  |  |  |
| 6 | 2.4 | 组织SPT启动会 | milestone | 1d | 2022-04-08 | 2022-04-08 | 3, 4, 5 | 0d |  | 产品经理; 营销; GTM | 16h | 产品路线图 |  |  |
| 7 | 3 | **项目计划制定** |  | 1d | 2022-04-08 | 2022-04-11 |  | 0d |  |  | 16h |  |  |  |
| 8 | 3.1 | 制定WBS计划表并发布 |  | 1d | 2022-04-11 | 2022-04-11 | 6 | 167d |  | 项目经理 | 8h | 产品概念决策报告 | WBS计划表 | 项目组全员 |
| 9 | 3.2 | 发布项目团队任命 |  | 1d | 2022-04-11 | 2022-04-11 | 6 | 167d |  | 项目经理 | 8h | 产品概念决策报告 | 项目团队任命表 |  |
| 10 | 3.3 | 启动ID设计 | milestone | 0d | 2022-04-08 | 2022-04-08 | 6 | 0d |  | ID |  | 产品需求表1.0 | ID效果图方案 |  |
| 11 | 4 | **技术前期评估** |  | 5d | 2022-04-11 | 2022-04-15 |  | 19d | 10d |  | 120h | 竞品分析报告 |  | 项目经理 |
| 12 | 4.1 | 结构技术评估 |  | 5d | 2022-04-11 | 2022-04-15 | 6 | 19d |  | 结构PM | 40h | 产品需求表1.0含包装需求 | 技术前期评估报告 |  |
| 13 | 4.2 | 硬件技术评估 |  | 5d | 2022-04-11 | 2022-04-15 | 6 | 19d |  | 硬件PM | 40h | 产品需求表1.0含包装需求 | 技术前期评估报告 |  |
| 14 | 4.3 | 软件技术评估 |  | 5d | 2022-04-11 | 2022-04-15 | 6 | 19d |  | 软件PM | 40h | 产品需求表1.0含包装需求 | 技术前期评估报告 |  |
| 15 | 5 | **ID造型方向决策** |  | 10d | 2022-04-11 | 2022-04-22 |  | 0d |  |  | 160h |  | 决策会议纪要 |  |
| 16 | 5.1 | 输出一轮ID模型 |  | 10d | 2022-04-11 | 2022-04-22 | 10 | 0d |  | ID | 80h |  | 一轮ID模型 | IDPM、结构、工艺、产品经理 |
| 17 | 5.2 | 输出CMF方向 |  | 10d | 2022-04-11 | 2022-04-22 | 10 | 0d |  | ID | 80h |  | CMF方向 | IDPM、结构、工艺、产品经理 |
| 18 | 6 | **产品概念决策** |  | 5d | 2022-04-24 | 2022-04-28 |  | 9d | 0d |  | 64h |  |  |  |
| 19 | 6.1 | 输出产品方案 |  | 3d | 2022-04-24 | 2022-04-26 | 17 | 9d | 0d | 产品经理 | 24h |  |  |  |
| 20 | 6.2 | 输出项目概算(初步损益表) |  | 2d | 2022-04-27 | 2022-04-28 | 19 | 9d | 0d | 项目经理; 产品经理; 采购CEG; 财经 | 40h | 产品方案 | 损益表1.0 |  |
| 21 | 7 | **确认ODM** |  | 3d | 2022-04-29 | 2022-05-06 |  | 9d | 0d |  | 24h |  |  |  |
| 22 | 7.1 | 确定ODM厂商并签署开发协议 |  | 3d | 2022-04-29 | 2022-05-06 | 20, 11 | 9d |  | 采购CEG | 24h |  | ODM供应商选择方案、开发协议 | 产品经理 |
| 23 | 8 | **技术可行性分析** |  | 10d | 2022-05-07 | 2022-05-19 |  | 135d |  |  | 640h |  |  |  |
| 24 | 8.1 | 组织技术可行性分析 |  | 10d | 2022-05-07 | 2022-05-19 | 21 | 140d |  | 产品经理; ID; 采购CEG; 结构PM; 硬件PM; SQA | 480h | 产品RFI、竞品列表 | 技术可行性分析报告 |  |
| 25 | 8.2 | 启动专利风险排查 |  | 10d | 2022-05-07 | 2022-05-19 | 21 | 140d |  | 产品经理 | 80h |  | 专利排查结论 | 法务、ID、硬件技术 |
| 26 | 8.3 | 组织三新物料评估 |  | 10d | 2022-05-07 | 2022-05-19 | 21 | 140d |  | SQA | 80h | BOM选型表、原材料MCD成分表 | 三新清单评估报告 |  |

Notes:
- 1: 产品路线图锁定
- 6: SPT启动

| ID | WBS | Task | Duration | Start | Finish | Predecessors | Total slack | Resources | Work | 输入 | 输出 | 相关方角色 |
| --- | --- | --- | --- | --- | --- | --- | --- | --- | --- | --- | --- | --- |
| 27 | 9 | **输入MR1策略** | 10d | 2022-04-29 | 2022-05-16 |  | 138d |  | 160h |  |  |  |
| 28 | 9.1 | 输出MKT策略1.0 | 10d | 2022-04-29 | 2022-05-16 | 18 | 143d | MKT | 80h | 产品路线图 | MKT策略1.0 | 产品经理：提出营销诉求、参与评审 |
| 29 | 9.2 | 输出操盘策略1.0 | 10d | 2022-04-29 | 2022-05-16 | 18 | 143d | GTM | 80h | 产品路线图 | 操盘策略1.0 | 产品经理：提出营销诉求、参与评审 |
| 30 | 10 | **确定ID造型方案** | 22d | 2022-04-24 | 2022-05-25 |  | 0d |  | 352h |  |  |  |
| 31 | 10.1 | 输出两轮ID模型 | 22d | 2022-04-24 | 2022-05-25 | 15 | 0d | ID | 176h |  | 二轮ID模型 | IDPM、结构、工艺、产品经理 |
| 32 | 10.2 | 输出CMF策略 | 22d | 2022-04-24 | 2022-05-25 | 15 | 0d | ID | 176h |  | CMF策略 | IDPM、结构、工艺、产品经理 |
| 33 | 11 | **锁定产品需求表** | 5d | 2022-05-26 | 2022-06-01 |  | 0d |  | 40h |  |  |  |
| 34 | 11.1 | 输出产品需求表2.0（包含物料代码，SKU） | 3d | 2022-05-26 | 2022-05-30 | 30 | 0d | 产品经理 | 24h | 产品需求表1.0 | 产品需求表2.0 | 项目经理 |
| 35 | 11.2 | 输出FABE 1.0 | 2d | 2022-05-31 | 2022-06-01 | 34 | 0d | 营销经理 | 16h |  | FABE 1.0 | 产品经理输入产品核心卖点 |
| 36 | 12 | **输出质量策划书** | 10d | 2022-05-07 | 2022-05-19 |  | 9d |  | 160h |  |  |  |
| 37 | 12.1 | 确认质量目标（含产品验收标准/量化指标） | 10d | 2022-05-07 | 2022-05-19 | 21 | 9d | PQA | 80h | 硬件测试用例、软件测试用例、竞品同类产品上市问题排查改善计划、核心卖点列表、项目WBS计划 | 质量策划书 | 硬件测试、软件测试、开发/产品经理/售后、产品经理、项目经理 |
| 38 | 12.2 | 制定质量目标达成策略及计划 | 10d | 2022-05-07 | 2022-05-19 | 21 | 9d | PQA | 80h | 同类产品市场退机数据及问题点 | 质量策划书 | 开发/产品经理/售后 |
| 39 | 13 | **立项决策** | 5d | 2022-06-02 | 2022-06-09 |  | 0d | 产品经理 | 240h |  | 立项决策报告、立项决策会议纪要 | 项目组全员 |
| 40 | 13.1 | 输出产品方案 | 5d | 2022-06-02 | 2022-06-09 | 36, 33 | 0d | 产品经理 | 40h |  |  |  |
| 41 | 13.2 | 输出成本信息 | 5d | 2022-06-02 | 2022-06-09 | 33, 36 | 0d | 采购CEG | 40h | 产品初版方案 | OPPO报价模板类成本 | 产品经理、ID |
| 42 | 13.3 | 输出项目预算 | 5d | 2022-06-02 | 2022-06-09 | 33, 36 | 0d | 项目经理 | 40h | 产品概念决策报告 | 项目经营损益表 | 产品经理、项目经理、采购、财经 |
| 43 | 13.4 | 输出项目阶段WBS计划（包含产品/营/销/开发/ID | 5d | 2022-06-02 | 2022-06-09 | 33, 36 | 0d | 项目经理 | 40h | 产品概念决策报告 | WBS计划 | 项目组全员 |
| 44 | 13.5 | 输出项目风险清单 | 5d | 2022-06-02 | 2022-06-09 | 33, 36 | 0d | 项目经理 | 40h |  | 项目风险清单 | 项目组全员 |
| 45 | 14 | **PDT立项会** | 1d | 2022-06-10 | 2022-06-10 |  | 0d |  | 8h |  |  |  |
| 46 | 14.1 | PDT立项 | 1d | 2022-06-10 | 2022-06-10 | 39 | 0d | 产品经理 | 8h |  | 立项会议纪要 | 项目组全员 |
| 47 | 15 | **投模** | 34d | 2022-06-13 | 2022-07-28 |  | 0d |  | 448h |  |  |  |
| 48 | 15.1 | 硬件详细方案设计 | 5d | 2022-06-13 | 2022-06-17 | 45 | 0d | 硬件PM | 40h | 产品RFI终版、硬件测试用例 | 硬件原理图和PCB | 产品经理、ID、结构、SQA、采购、硬件测试、软件测试 |
| 49 | 15.2 | ID详细方案设计 | 5d | 2022-06-13 | 2022-06-17 | 45 | 0d | ID | 40h | 产品RFI终版、硬件测试用例 | ID 3D | 产品经理、ID、结构、SQA、采购、硬件测试、软件测试 |
| 50 | 15.3 | 结构详细方案设计 | 5d | 2022-06-13 | 2022-06-17 | 45 | 0d | 结构PM | 40h | 产品RFI终版、硬件测试用例 | 结构堆叠图 | 产品经理、ID、结构、SQA、采购、硬件测试、软件测试 |
| 51 | 15.4 | 输出功能手板 | 5d | 2022-06-13 | 2022-06-17 | 45 | 120d | XX PM | 40h |  | 功能手板 |  |
| 52 | 15.5 | 关键物料评审 | 1d | 2022-06-20 | 2022-06-20 | 48, 49, 50 | 0d | 采购CEG | 8h | 产品BOM表 | 关键物料评审表 | 项目经理、硬件、结构、SQA |
| 53 | 15.6 | 评估长周期物料风险备料 | 5d | 2022-06-21 | 2022-06-27 | 52 | 114d | 项目经理 | 40h |  | 正式决策会议纪要 | 项目经理、采购、SQA、硬件、结构 |
| 54 | 15.7 | 发板评审 | 1d | 2022-06-21 | 2022-06-21 | 52 | 0d | 硬件PM | 8h | 硬件测试报告、硬件调测报告 | PCB发板评审记录 | 结构、SQA、NPI、硬测 |
| 55 | 15.8 | TR2评审 | 1d | 2022-06-22 | 2022-06-22 | 52, 54 | 0d | PQA | 8h |  | TR2评审报告及结论 | 项目组全员 |
| 56 | 15.9 | 投模评审 | 1d | 2022-06-23 | 2022-06-23 | 55 | 0d | 结构PM | 8h |  | 投模评审报告 |  |
| 57 | 15.10 | 输出样机需求 | 1d | 2022-06-23 | 2022-06-23 | 55 | 116d | 项目经理 | 8h |  | 样机需求清单 | 项目组全员 |
| 58 | 15.11 | 输出初步BOM清单 | 1d | 2022-06-23 | 2022-06-23 | 55 | 116d | 项目经理 | 8h |  | BOM清单 | 项目组全员 |
| 59 | 15.12 | T0验证 | 25d | 2022-06-24 | 2022-07-28 | 56 | 0d | 结构PM | 200h |  | FAI报告、可靠性测试、试装报告表 |  |

| ID | WBS | Task | Duration | Start | Finish | Predecessors | Total slack | Free slack | Resources | Work | 输入 | 输出 | 相关方角色 |
| --- | --- | --- | --- | --- | --- | --- | --- | --- | --- | --- | --- | --- | --- |
| 60 | 16 | **EVT** | 38d | 2022-07-29 | 2022-09-21 |  | 0d |  |  | 760h |  |  |  |
| 61 | 16.1 | TR3A评审 | 1d | 2022-07-29 | 2022-07-29 | 59 | 0d |  | PQA | 8h | 输出评审要素表交付件 | TR2评审报告及结论 | 项目组全员 |
| 62 | 16.2 | 组织EVT试产 | 5d | 2022-08-01 | 2022-08-05 | 61 | 0d |  | 项目经理 | 40h |  | 试产报表 | 项目组全员 |
| 63 | 16.3 | 全工艺样品精细度评审 | 3d | 2022-08-08 | 2022-08-10 | 62 | 82d |  | ID | 24h |  | 精细度评审报告 |  |
| 64 | 16.4 | 包材结构样确认 | 5d | 2022-08-01 | 2022-08-05 | 61 | 72d | 0d | 包装工程师 | 40h |  | 评审会议纪要 |  |
| 65 | 16.5 | 投实验验证 | 10d | 2022-08-08 | 2022-08-19 | 62 | 0d |  | 测试代表; PQE | 160h |  | 测试报告 |  |
| 66 | 16.6 | EVT问题改善及验证 | 10d | 2022-08-08 | 2022-08-19 | 62 | 0d |  | XX PM | 80h |  | 问题清单 | 项目经理、SQA、品质 |
| 67 | 16.7 | 启动认证 | 5d | 2022-08-22 | 2022-08-26 | 65, 66 | 40d | 0d | 认证PM | 40h | 厂家可靠性测试报告、厂商环保测试报告、样机需求 | 认证计划 | 项目经理 |
| 68 | 16.8 | 上市需求表评估长周期物料备料 | 5d | 2022-08-22 | 2022-08-26 | 65, 66 | 70d |  | 项目经理 | 40h |  | 正式决策会议纪要 | 项目经理、采购、SQA、硬件、结构 |
| 69 | 16.9 | 提供营销样机 | 5d | 2022-08-22 | 2022-08-26 | 65, 66 | 70d |  | 项目经理 | 40h |  |  | 产品经理、ID、营销经理 |
| 70 | 16.10 | 产品试用 | 22d | 2022-08-22 | 2022-09-21 | 65, 66 | 53d |  | PQE | 176h | 按照测试样机需求输出样机 | 试用报告 | 项目经理、产品经理 |
| 71 | 16.11 | 结构改模评审 | 2d | 2022-08-22 | 2022-08-23 | 65, 66 | 0d |  | 结构PM | 16h |  | 改模图档 | 结构、SQA、NPI、硬测 |
| 72 | 16.12 | 硬件DVT发板评审 | 2d | 2022-08-22 | 2022-08-23 | 65, 66 | 0d |  | 硬件PM | 16h | 硬件测试报告、硬件调测报告 | PCB发板评审记录 | 结构、SQA、NPI、硬测 |
| 73 | 16.13 | DVT备料 | 10d | 2022-08-24 | 2022-09-06 | 71, 72 | 0d |  | 项目经理 | 80h | 备料计划 |  | 采购CEG、SQA |
| 74 | 17 | **DVT** | 57d | 2022-08-08 | 2022-10-31 |  | 22d |  |  | 1312h |  |  |  |
| 75 | 17.1 | TR3评审 | 1d | 2022-09-07 | 2022-09-07 | 71, 72, 73 | 0d |  | PQA | 8h | 输出评审要素表交付件 | TR2评审报告及结论 | 项目组全员 |
| 76 | 17.2 | 组织DVT试产 | 5d | 2022-09-08 | 2022-09-15 | 75 | 0d |  | 项目经理 | 40h |  | 试产报表 | 项目组全员 |
| 77 | 17.3 | 全工艺样品精细度评审 | 3d | 2022-09-16 | 2022-09-20 | 76 | 54d |  | ID | 24h |  | 精细度评审报告 |  |
| 78 | 17.4 | 包材方案锁定 | 10d | 2022-08-08 | 2022-08-19 | 64 | 72d | 18d | 包装工程师 | 80h |  | 评审会议纪要 |  |
| 79 | 17.5 | 投实验验证 | 5d | 2022-09-16 | 2022-09-22 | 76 | 0d |  | 测试代表; PQE | 80h |  | 测试报告 |  |
| 80 | 17.6 | DVT问题改善及验证 | 5d | 2022-09-16 | 2022-09-22 | 76 | 0d |  | XX PM | 40h |  | 问题清单 | 项目经理、SQA、品质 |
| 81 | 17.7 | 认证结论 | 30d | 2022-08-29 | 2022-10-13 | 67 | 40d |  | 认证PM | 240h | 厂家可靠性测试报告、厂商环保测试报告、样机需求 | 认证报告 | 项目经理 |
| 82 | 17.8 | 结构改模评审 | 2d | 2022-09-23 | 2022-09-26 | 79, 80 | 0d |  | 结构PM | 16h |  | 改模图档 | 结构、SQA、NPI、硬测 |
| 83 | 17.9 | 硬件PVT发板评审 | 2d | 2022-09-23 | 2022-09-26 | 79, 80 | 0d |  | 硬件PM | 16h | 硬件测试报告、硬件调测报告 | PCB发板评审记录 | 结构、SQA、NPI、硬测 |
| 84 | 17.10 | 产品图/场景图交付（上市前半个月完成橱窗图、商详页、源文件） | 20d | 2022-09-08 | 2022-10-11 | 75 | 42d |  | MKT | 160h | 产品样机 | 橱窗图、商详页、源文件 | PDT经理：提供样机、产品经理：输入拍摄需求 |
| 85 | 17.11 | 销售资料包交付 | 10d | 2022-09-08 | 2022-09-22 | 75 | 52d |  | 产品经理 | 80h |  | 销售资料包 |  |
| 86 | 17.12 | 锁定量产BOM清单 | 2d | 2022-09-27 | 2022-09-28 | 82, 83 | 18d | 0d | 项目经理 | 16h |  | 最终BOM清单 | 项目组全员 |
| 87 | 17.13 | 外观单体签样 | 2d | 2022-09-16 | 2022-09-19 | 76 | 10d | 0d | XX PM | 16h |  | 实物 | 项目组全员 |
| 88 | 17.14 | MKT方案2.0 | 10d | 2022-09-08 | 2022-09-22 | 75 | 27d | 9d | MKT | 80h |  |  |  |
| 89 | 17.15 | 操盘方案2.0 | 10d | 2022-09-08 | 2022-09-22 | 75 | 27d | 9d | GTM | 80h |  |  |  |
| 90 | 17.16 | 输出FABE 2.0 | 10d | 2022-09-08 | 2022-09-22 | 75 | 27d | 9d | 营销经理 | 80h |  | FABE 2.0 |  |
| 91 | 17.17 | 外观专利申请确认 | 5d | 2022-09-08 | 2022-09-15 | 75 | 57d |  | ID | 40h |  |  |  |
| 92 | 17.18 | 量产物料备料 | 22d | 2022-09-27 | 2022-10-31 | 82, 83, 87 | 0d |  | 项目经理 | 176h |  | 正式决策会议纪要 | 项目经理、采购、SQA、硬件、结构 |
| 93 | 17.19 | 运输实验 | 3d | 2022-09-16 | 2022-09-20 | 76, 78 | 54d |  | PQE | 24h | 按照测试样机需求输出样机 | 运输测试报告 | 项目经理 |
| 94 | 17.20 | 锁定成本（上市前半个月） | 2d | 2022-09-20 | 2022-09-21 | 87 | 28d | 10d | 采购CEG | 16h | 产品定稿方案 | OPPO报价模板类成本 | 产品经理、ID |

| ID | WBS | Task | Duration | Start | Finish | Predecessors | Total slack | Free slack | Resources | Work | 输出 | 相关方角色 | 输入 |
| --- | --- | --- | --- | --- | --- | --- | --- | --- | --- | --- | --- | --- | --- |
| 95 | 18 | **样机决策** | 2d | 2022-09-29 | 2022-09-30 |  | 18d |  |  | 16h |  |  |  |
| 96 | 18.1 | 样机决策 | 1d | 2022-09-29 | 2022-09-29 | 86, 87, 88, 89, 90, 94 | 18d | 0d | 项目经理 | 8h | 样机决策报告决策会议纪要 | PL-PAC成员、产品经理、项目经理、IMS经理 |  |
| 97 | 18.2 | TR4评审 | 1d | 2022-09-30 | 2022-09-30 | 96 | 18d | 0d | PQA | 8h | TR2评审报告及结论 | 项目组全员 | 输出评审要素表交付件 |
| 98 | 19 | **PVT** | 28d | 2022-10-08 | 2022-11-14 |  | 0d |  |  | 320h |  |  |  |
| 99 | 19.1 | 确定产品价格 | 5d | 2022-10-08 | 2022-10-12 | 97 | 23d |  | GTM | 40h | 价格文件 | 采购：提供成本 | 产品成本、产品名称+物料代码 |
| 100 | 19.2 | 锁定产品参数表 | 5d | 2022-10-08 | 2022-10-12 | 97 | 23d |  | 产品经理 | 40h | 产品参数表 | 项目组全员 |  |
| 101 | 19.3 | 锁定产品参数表 | 5d | 2022-10-08 | 2022-10-12 | 97 | 23d |  | 产品经理 | 40h | 产品参数表 | 项目组全员 |  |
| 102 | 19.4 | FAQ | 5d | 2022-10-08 | 2022-10-12 | 97 | 23d |  | 产品经理 | 40h | FAQ资料 | 项目组全员 |  |
| 103 | 19.5 | 产品商详 | 5d | 2022-10-08 | 2022-10-12 | 97 | 23d |  | MKT | 40h | 营销素材 | 产品经理：提供产品文案 | 产品文案 |
| 104 | 19.6 | 回货计划 | 5d | 2022-10-08 | 2022-10-12 | 97 | 23d |  | 项目经理 | 40h | 回货计划邮件 | 项目经理、采购、PMC |  |
| 105 | 19.7 | 组织PVT试产 | 10d | 2022-11-01 | 2022-11-14 | 97, 92 | 0d |  | 项目经理 | 80h | 试产报表 | 项目组全员 |  |
| 106 | 20 | **量产** | 8d | 2022-11-15 | 2022-11-24 |  | 0d |  |  | 72h |  |  |  |
| 107 | 20.1 | 出货评审 | 1d | 2022-11-15 | 2022-11-15 | 98 | 0d |  | PQA | 8h | TR2评审报告及结论 | 项目组全员 | 输出评审要素表交付件 |
| 108 | 20.2 | 上市点检确认（产品信息上线） | 1d | 2022-11-15 | 2022-11-15 | 98 | 7d |  | 项目经理 | 8h | 点检表 | 项目组全员 |  |
| 109 | 20.3 | 渠道铺货 | 7d | 2022-11-16 | 2022-11-24 | 107 | 0d |  | 营销经理 | 56h |  | 产销、采购CEG | 提货计划 |
| 110 | 21 | **项目总结** | 5d | 2022-11-25 | 2022-12-01 |  | 0d |  | 项目经理 | 80h | 项目总结报告 | 项目组全员 | 项目所有过程文件 |
| 111 | 21.1 | 项目总结 | 5d | 2022-11-25 | 2022-12-01 | 106 | 0d |  | 项目经理 | 40h | 项目总结报告 | 项目组全员 | 项目所有过程文件 |
